# 车道系统开发项目计划书

Schedule from MS Project, 2019-01-02 to 2022-07-26, status date 2019-01-03, A marks actual dates.

## Calendars

- 华胜标准日历: Mon-Fri 08:00-12:00, 13:00-17:00; Sat-Sun off. Exceptions (off unless hours are given): 2019-01-12 08:00-12:00, 13:00-17:00.

## Resources

| Resource |
| --- |
| 罗贵成 |
| 陈青 |
| 肖小溪 |
| 潘允凌 |
| 肖文林 |
| 陈思思 |
| 胡萍 |
| 黎仕娟 |
| 曾飞飞 |
| 丁龄勃 |
| 沈智 |
| 熊鹰 |
| 莫敏兰 |
| 曾史强 |
| 李成 |
| 梁升启 |
| 杨友辉 |
| 史强 |
| 李东升 |
| 常增勇 |
| 外民 |
| 外包 |

## Schedule

| ID | WBS | Task | Type | Duration | Start | Finish | Complete | Remaining | Baseline start | Baseline finish | Baseline duration | Constraint | Resources | Work | Actual work |
| --- | --- | --- | --- | --- | --- | --- | --- | --- | --- | --- | --- | --- | --- | --- | --- |
| 1 | 1 | 需求分析 |  | 2d? | 2019-01-02 A | 2019-01-03 A | 100% |  |  |  |  | finish no earlier than 2019-01-03 |  |  |  |
| 2 | 2 | 详细设计 |  | 2d | 2019-01-02 A | 2019-01-03 A | 100% |  | 2016-03-15 | 2016-06-30 | 78d? | finish no earlier than 2019-01-03 |  |  |  |
| 3 | 3 | **PC** |  | 23d | 2019-01-02 A | 2019-01-31 | 6% | 21.56d | 2016-03-08 | 2016-08-12 | 114d? |  |  | 8120h | 608h |
| 4 | TKL.I.H.A.17.44 | 车道官网开发 | manual | 20d | 2019-01-04 | 2019-01-30 |  |  |  |  |  |  | 李成 | 160h |  |
| 5 | TKL.I.H.A.17.37 | 维修检测标准模版开发 | manual | 1d | 2019-01-04 | 2019-01-04 |  |  |  |  |  |  | 丁龄勃 | 8h |  |
| 6 | TKL.I.H.A.17.38 | 宜修店面监控报表功能开发 | manual | 16d | 2019-01-07 | 2019-01-25 |  |  |  |  |  |  | 丁龄勃 | 128h |  |
| 7 | TKL.I.H.A.17.39 | 车道白皮书制作 | manual | 10d | 2019-01-02 A | 2019-01-14 | 20% | 8d |  |  |  |  | 胡萍 | 80h | 16h |
| 8 | TKL.I.H.A.17.40 | 系统培训支持方案编写 | manual | 3d | 2019-01-16 | 2019-01-18 |  |  |  |  |  |  | 胡萍 | 24h |  |
| 9 | TKL.I.H.A.17.41 | 系统整体运营框架介绍 | manual | 9d | 2019-01-16 | 2019-01-26 |  |  |  |  |  |  | 罗贵成 | 72h |  |
| 10 | TKL.I.H.A.17.43 | 计次卡退款功能开发 | manual | 1d | 2019-01-03 A | 2019-01-03 A | 100% |  |  |  |  |  | 丁龄勃; 熊鹰 | 16h | 16h |
| 11 | TKL.I.H.A.17.42 | 储值卡退款功能开发 | manual | 1d | 2019-01-03 A | 2019-01-03 A | 100% |  |  |  |  |  | 丁龄勃; 熊鹰 | 16h | 16h |
| 12 | 3.9 | **报表功能开发** |  | 1d | 2019-01-02 A | 2019-01-02 |  | 1d | 2016-03-08 | 2016-03-31 | 18d |  | 丁龄勃 | 872h | 8h |
| 13 | TKL.I.H.A.17.14.1 | 多租户联合报表 | manual | 5d | 2019-01-08 | 2019-01-12 |  |  |  |  |  | start no earlier than 2019-01-08 | 丁龄勃; 熊鹰 | 80h |  |
| 14 | TKL.I.H.A.17.14.3 | 多门店联合报表 | manual | 5d | 2019-01-08 | 2019-01-12 |  |  |  |  |  |  | 丁龄勃; 熊鹰 | 80h |  |
| 15 | TKL.I.H.A.17.14.6 | 仪表盘 | manual | 4d | 2019-01-04 | 2019-01-09 |  |  |  |  |  |  | 丁龄勃; 熊鹰 | 64h |  |
| 16 | TKL.I.H.A.17.14.7 | 营业日报 | manual | 4d | 2019-01-04 | 2019-01-09 |  |  |  |  |  |  | 丁龄勃; 熊鹰 | 64h |  |
| 17 | TKL.I.H.A.17.14.5 | 业务产值汇总表 | manual | 4d | 2019-01-04 | 2019-01-09 |  |  |  |  |  |  | 丁龄勃; 熊鹰 | 64h |  |
| 18 | TKL.I.H.A.17.14.9 | 配件销售报表 | manual | 4d | 2019-01-04 | 2019-01-09 |  |  |  |  |  |  | 丁龄勃; 熊鹰 | 64h |  |
| 19 | TKL.I.H.A.17.14.8 | 套餐销售报表 | manual | 4d | 2019-01-04 | 2019-01-09 |  |  |  |  |  |  | 丁龄勃; 熊鹰 | 64h |  |
| 20 | TKL.I.H.A.17.14.4 | 利润统计表 | manual | 4d | 2019-01-04 | 2019-01-09 |  |  |  |  |  |  | 丁龄勃; 熊鹰 | 64h |  |
| 21 | TKL.I.H.A.17.14.11 | 日结算报表 | manual | 4d | 2019-01-04 | 2019-01-09 |  |  |  |  |  |  | 丁龄勃; 熊鹰 | 64h |  |
| 22 | TKL.I.H.A.17.14.12 | 技师提成报表 | manual | 4d | 2019-01-04 | 2019-01-09 |  |  |  |  |  |  | 丁龄勃; 熊鹰 | 64h |  |
| 23 | TKL.I.H.A.17.14.13 | 销售提成报表 | manual | 4d | 2019-01-04 | 2019-01-09 |  |  |  |  |  |  | 丁龄勃; 熊鹰 | 64h |  |
| 24 | TKL.I.H.A.17.14.14 | 服务顾问提成报表 | manual | 4d | 2019-01-04 | 2019-01-09 |  |  |  |  |  |  | 丁龄勃; 熊鹰 | 64h |  |
| 25 | TKL.I.H.A.17.14.10 | 员工提成汇总表 | manual | 4d | 2019-01-04 | 2019-01-09 |  |  |  |  |  |  | 丁龄勃; 熊鹰 | 64h |  |

| ID | WBS | Task | Type | Duration | Start | Finish | Complete | Remaining | Resources | Work | Actual work |
| --- | --- | --- | --- | --- | --- | --- | --- | --- | --- | --- | --- |
| 26 | TKL.I.H.A.17.34 | **客户模块功能开发** |  | 1d? | 2019-01-02 | 2019-01-02 |  |  |  | 816h |  |
| 27 | TKL.I.H.A.17.34.5 | 保养提醒 | manual | 17d | 2019-01-04 | 2019-01-25 |  |  | 梁升启 | 136h |  |
| 28 | TKL.I.H.A.17.34.4 | 特别关怀 | manual | 17d | 2019-01-04 | 2019-01-25 |  |  | 梁升启 | 136h |  |
| 29 | TKL.I.H.A.17.34.3 | 客户回访 | manual | 17d | 2019-01-04 | 2019-01-25 |  |  | 梁升启 | 136h |  |
| 30 | TKL.I.H.A.17.34.2 | 流失回访 | manual | 17d | 2019-01-04 | 2019-01-25 |  |  | 梁升启 | 136h |  |
| 31 | TKL.I.H.A.17.34.1 | 点评管理 | manual | 17d | 2019-01-04 | 2019-01-25 |  |  | 梁升启 | 136h |  |
| 32 | TKL.I.H.A.17.34.6 | 客户群发 | manual | 17d | 2019-01-04 | 2019-01-25 |  |  | 梁升启 | 136h |  |
| 33 | TKL.I.H.A.17.17 | **供应链对接** |  | 1d | 2019-01-02 A | 2019-01-02 | 17% | 0.83d |  | 1056h | 176h |
| 34 | TKL.I.H.A.17.17.4 | 开通SRM系统 | manual | 13d | 2019-01-02 A | 2019-01-17 | 15% | 11d | 丁龄勃; 杨友辉 | 208h | 32h |
| 35 | TKL.I.H.A.17.17.1 | SRM库存查询 | manual | 1d | 2019-01-02 A | 2019-01-02 A | 100% |  | 丁龄勃; 杨友辉 | 16h | 16h |
| 36 | TKL.I.H.A.17.17.2 | 在SRM询价 | manual | 13d | 2019-01-02 A | 2019-01-17 | 15% | 11d | 曾史强; 杨友辉 | 208h | 32h |
| 37 | TKL.I.H.A.17.17.3 | 在SRM下采购订单 | manual | 13d | 2019-01-02 A | 2019-01-17 | 15% | 11d | 曾史强; 杨友辉 | 208h | 32h |
| 38 | TKL.I.H.A.17.17.5 | SRM订单入库 | manual | 13d | 2019-01-02 A | 2019-01-17 | 15% | 11d | 曾史强; 杨友辉 | 208h | 32h |
| 39 | TKL.I.H.A.17.17.6 | 采购退货 | manual | 13d | 2019-01-02 A | 2019-01-17 | 15% | 11d | 曾史强; 杨友辉 | 208h | 32h |
| 40 | TKL.I.H.A.17.20 | **聚合收款对接** |  | 1d | 2019-01-02 | 2019-01-02 |  |  |  | 240h |  |
| 41 | TKL.I.H.A.17.20.3 | 聚合收款申请及开通 | manual | 6d | 2019-01-14 | 2019-01-20 |  |  | 肖文林 | 48h |  |
| 42 | TKL.I.H.A.17.20.1 | 多租户模式设计 | manual | 6d | 2019-01-14 | 2019-01-20 |  |  | 丁龄勃 | 48h |  |
| 43 | TKL.I.H.A.17.20.2 | 后台APPKEY，APPID配置 | manual | 6d | 2019-01-14 | 2019-01-20 |  |  | 丁龄勃 | 48h |  |
| 44 | TKL.I.H.A.17.20.4 | 支付订单管理 | manual | 6d | 2019-01-14 | 2019-01-20 |  |  | 熊鹰 | 48h |  |
| 45 | TKL.I.H.A.17.20.5 | 系统与收款对接 | manual | 6d | 2019-01-14 | 2019-01-20 |  |  | 熊鹰 | 48h |  |
| 46 | TKL.I.H.A.17.31 | **销售机会相关开发** |  | 1d? | 2019-01-02 | 2019-01-02 |  |  |  | 240h |  |
| 47 | TKL.I.H.A.17.31.21 | 保养到期 | manual | 5d | 2019-01-08 | 2019-01-12 |  |  | 梁升启 | 40h |  |
| 48 | TKL.I.H.A.17.31.20 | 保险到期 | manual | 5d | 2019-01-08 | 2019-01-12 |  |  | 梁升启 | 40h |  |
| 49 | TKL.I.H.A.17.31.19 | 违章 | manual | 5d | 2019-01-08 | 2019-01-12 |  |  | 梁升启 | 40h |  |
| 50 | TKL.I.H.A.17.31.18 | 车况检查生成机会 | manual | 5d | 2019-01-08 | 2019-01-12 |  |  | 梁升启 | 40h |  |
| 51 | TKL.I.H.A.17.31.12 | 报价未修，SA登记相关机会 | manual | 5d | 2019-01-08 | 2019-01-12 |  |  | 梁升启 | 40h |  |
| 52 | TKL.I.H.A.17.31.22 | 维修项目周期循环机会 | manual | 5d | 2019-01-08 | 2019-01-12 |  |  | 梁升启 | 40h |  |

| ID | WBS | Task | Type | Duration | Start | Finish | Complete | Remaining | Actual start | Resources | Work | Actual work |
| --- | --- | --- | --- | --- | --- | --- | --- | --- | --- | --- | --- | --- |
| 53 | TKL.I.H.A.17.32 | **微信开发** |  | 1d | 2019-01-02 A | 2019-01-02 | 9% | 0.91d |  | 丁龄勃 | 2120h | 192h |
| 54 | TKL.I.H.A.17.32.14 | 服务评价，服务进程变更模版消息 | manual | 22d | 2019-01-02 A | 2019-01-30 | 9% | 20d |  | 李东升; 莫敏兰 | 352h | 32h |
| 55 | TKL.I.H.A.17.32.15 | 卡券核销，微信群发消息，微信图文消息 | manual | 22d | 2019-01-02 A | 2019-01-30 | 9% | 20d |  | 李东升; 莫敏兰 | 352h | 32h |
| 56 | TKL.I.H.A.17.32.16 | 预约 | manual | 22d | 2019-01-02 A | 2019-01-30 | 9% | 20d |  | 李东升; 莫敏兰 | 352h | 32h |
| 57 | TKL.I.H.A.17.32.19 | 服务履历 | manual | 22d | 2019-01-02 A | 2019-01-30 | 9% | 20d |  | 李东升; 莫敏兰 | 352h | 32h |
| 58 | TKL.I.H.A.17.32.18 | 用户管理 | manual | 22d | 2019-01-02 A | 2019-01-30 | 9% | 20d |  | 李东升; 莫敏兰 | 352h | 32h |
| 59 | TKL.I.H.A.17.32.1 | 服务号基础信息（服务号管理） | manual | 22d | 2019-01-02 A | 2019-01-30 | 9% | 20d |  | 李东升; 莫敏兰 | 352h | 32h |
| 60 | TKL.I.H.A.17.33 | **APP** |  | 931d? | 2019-01-02 A | 2022-07-26 | 10% | 836.45d? |  |  | 2000h | 184h |
| 61 | TKL.I.H.A.17.33.18 | PC端扫码登录 | manual | 2d | 2019-01-04 | 2019-01-05 |  |  |  | 沈智; 丁龄勃 | 32h |  |
| 62 | TKL.I.H.A.17.33.23 | 客户模块功能开发 | manual | 12d | 2019-01-03 A | 2019-01-17 | 8% | 11d |  | 常增勇; 丁龄勃 | 192h | 16h |
| 63 | TKL.I.H.A.17.33.24 | **客户模块功能联调** |  | 1d? | 2019-01-02 | 2019-01-02 | 8% | 0.92d? | 2019-01-03 |  | 1728h | 144h |
| 64 | TKL.I.H.A.17.33.24.1 | 客户列表 | manual | 12d | 2019-01-03 A | 2019-01-17 | 8% | 11d |  | 常增勇; 梁升启 | 192h | 16h |
| 65 | TKL.I.H.A.17.33.24.2 | 保养提醒 | manual | 12d | 2019-01-03 A | 2019-01-17 | 8% | 11d |  | 常增勇; 梁升启 | 192h | 16h |
| 66 | TKL.I.H.A.17.33.24.3 | 年检到期提醒 | manual | 12d | 2019-01-03 A | 2019-01-17 | 8% | 11d |  | 常增勇; 梁升启 | 192h | 16h |
| 67 | TKL.I.H.A.17.33.24.4 | 商业险到期提醒 | manual | 12d | 2019-01-03 A | 2019-01-17 | 8% | 11d |  | 常增勇; 梁升启 | 192h | 16h |
| 68 | TKL.I.H.A.17.33.24.5 | 交强险到期提醒 | manual | 12d | 2019-01-03 A | 2019-01-17 | 8% | 11d |  | 常增勇; 梁升启 | 192h | 16h |
| 69 | TKL.I.H.A.17.33.24.6 | 客户生日提醒 | manual | 12d | 2019-01-03 A | 2019-01-17 | 8% | 11d |  | 常增勇; 梁升启 | 192h | 16h |
| 70 | TKL.I.H.A.17.33.24.7 | 驾照年审提醒 | manual | 12d | 2019-01-03 A | 2019-01-17 | 8% | 11d |  | 常增勇; 梁升启 | 192h | 16h |
| 71 | TKL.I.H.A.17.33.24.8 | 客户回访 | manual | 12d | 2019-01-03 A | 2019-01-17 | 8% | 11d |  | 常增勇; 梁升启 | 192h | 16h |
| 72 | TKL.I.H.A.17.33.24.9 | 流失回访 | manual | 12d | 2019-01-03 A | 2019-01-17 | 8% | 11d |  | 常增勇; 梁升启 | 192h | 16h |
| 73 | TKL.I.H.A.17.33.26 | **报表模块功能开发** |  | 1d? | 2019-01-02 | 2019-01-02 | 50% | 0.5d? | 2019-01-03 |  | 48h | 24h |
| 74 | TKL.I.H.A.17.33.26.1 | 首页 | manual | 1d | 2019-01-03 A | 2019-01-03 A | 100% |  |  | 沈智 | 8h | 8h |
| 75 | TKL.I.H.A.17.33.26.2 | 绩效提成报表 | manual | 1d | 2019-01-03 A | 2019-01-03 A | 100% |  |  | 沈智 | 8h | 8h |
| 76 | TKL.I.H.A.17.33.26.3 | 营业统计 | manual | 1d | 2019-01-03 A | 2019-01-03 A | 100% |  |  | 沈智 | 8h | 8h |
| 77 | TKL.I.H.A.17.33.26.4 | 工单汇总报表 | manual | 1d | 2019-01-04 | 2019-01-04 |  |  |  | 沈智 | 8h |  |
| 78 | TKL.I.H.A.17.33.26.5 | 充值办卡报表 | manual | 1d | 2019-01-04 | 2019-01-04 |  |  |  | 沈智 | 8h |  |
| 79 | TKL.I.H.A.17.33.26.6 | 收款款报表 | manual | 1d | 2019-01-04 | 2019-01-04 |  |  |  | 沈智 | 8h |  |
| 80 | TKL.I.H.A.17.36 | 客服SR集成到车道 | manual | 34d | 2019-02-13 | 2019-03-31 |  |  |  | 丁龄勃 | 272h |  |

| ID | WBS | Task | Type | Duration | Start | Finish | Complete | Remaining | Actual start | Baseline start | Baseline finish | Baseline duration | Total slack | Constraint | Resources | Work | Actual work |
| --- | --- | --- | --- | --- | --- | --- | --- | --- | --- | --- | --- | --- | --- | --- | --- | --- | --- |
| 81 | 4 | **测试** |  | 6d | 2019-01-02 A | 2019-01-09 | 11% | 5.31d |  | 2016-04-01 | 2016-08-19 | 101d |  |  |  | 1956h | 226h |
| 82 | 4.1 | **功能测试** |  | 0.5d | 2019-01-02 A | 2019-01-02 | 11% | 0.44d |  | 2016-08-16 | 2016-08-19 | 4d |  |  | 丁龄勃 | 1956h | 226h |
| 83 | TKL.I.H.A.18.5.1 | APP采购模块测试 | manual | 3d | 2019-01-03 A | 2019-01-05 | 33% | 2d |  |  |  |  |  |  | 莫敏兰; 熊鹰; 梁升启; 曾史强 | 96h | 32h |
| 84 | TKL.I.H.A.18.5.2 | APP库存模块测试 | manual | 3d | 2019-01-03 A | 2019-01-05 | 33% | 2d |  |  |  |  |  |  | 莫敏兰; 熊鹰; 梁升启; 曾史强 | 96h | 32h |
| 85 | TKL.I.H.A.18.5.3 | APP应收模块测试 | manual | 3d | 2019-01-03 A | 2019-01-05 | 33% | 2d |  |  |  |  |  |  | 莫敏兰; 熊鹰; 梁升启; 曾史强 | 96h | 32h |
| 86 | TKL.I.H.A.18.5.4 | APP报表模块测试 | manual | 3d | 2019-01-03 A | 2019-01-05 | 33% | 2d |  |  |  |  |  |  | 莫敏兰; 熊鹰; 梁升启; 曾史强 | 96h | 32h |
| 87 | TKL.I.H.A.18.5.5 | APP客户模块测试 | manual | 12d | 2019-01-03 A | 2019-01-17 | 8% | 11d |  |  |  |  |  |  | 莫敏兰; 熊鹰; 梁升启; 曾史强 | 384h | 32h |
| 88 | TKL.I.H.A.18.5.6 | PC端客户模块测试 | manual | 12d | 2019-01-03 A | 2019-01-17 | 8% | 11d |  |  |  |  |  |  | 莫敏兰; 熊鹰; 梁升启; 曾史强 | 384h | 32h |
| 89 | TKL.I.H.A.18.5.9 | PC端报表模块测试 | manual | 12d | 2019-01-03 A | 2019-01-17 | 8% | 11d |  |  |  |  |  |  | 莫敏兰; 熊鹰; 梁升启; 曾史强 | 384h | 32h |
| 90 | TKL.I.H.A.18.5.7 | 微信后台管理相关功能测试 | manual | 13d | 2019-02-12 | 2019-02-28 |  |  |  |  |  |  |  |  | 莫敏兰; 熊鹰; 梁升启; 曾史强 | 416h |  |
| 91 | 5 | **试运行** |  | 1d? | 2019-01-02 | 2019-01-02 |  | 1d? | 2019-01-12 | 2016-08-22 | 2016-08-29 | 6d? |  |  |  | 8h |  |
| 92 | 5.1 | 试运行申请 | milestone | 0d? | 2019-01-12 A | 2019-01-12 A | 100% |  |  | 2016-08-22 | 2016-08-22 | 1d? |  |  | 丁龄勃 |  |  |
| 93 | 5.2 | 发布试运行 |  | 1d | 2019-01-12 | 2019-01-12 |  |  |  |  |  |  | 922d | finish no earlier than 2019-01-12 | 丁龄勃 | 8h |  |

Notes:
- 92: 客户信息系统整体试运行
